# 9.18

Schedule from MS Project, 2001-08-07 to 2004-06-09, status date 2001-08-16, A marks actual dates.
AngelEngineers

## Calendars

- Standard: Mon-Fri 08:00-12:00, 13:00-17:00; Sat-Sun off. Exceptions (off unless hours are given): 2001-09-29 to 2001-09-30 08:00-12:00, 13:00-17:00, 2001-10-01 to 2001-10-05, 2001-10-07, 2001-11-17 to 2001-11-18 08:00-12:00, 13:00-17:00.

## Resources

| Resource | Group |
| --- | --- |
| Cedric_Lin | Programming |
| Erin_Wang | Programming & Integration |
| jack_huang |  |
| John_Wang | Project Management & Architecture |
| Robin_Liu | Programming |
| ??? |  |
| ?? |  |
| eric_chen |  |
| hz_liu |  |
| kurt_xiang |  |
| shui_wang |  |
| ardy_yan |  |
| xz_wu |  |
| zg_zheng |  |
| Albert_Wang |  |
| Billy_Zhou |  |

## Schedule

| ID | WBS | Task | Type | Duration | Start | Finish | Complete | Remaining | Baseline start | Baseline finish | Baseline duration | Total slack | Constraint | Resources | Work | Actual work |
| --- | --- | --- | --- | --- | --- | --- | --- | --- | --- | --- | --- | --- | --- | --- | --- | --- |
| 1 | 1 | **Requirments Prepare** |  | 27.88d | 2001-08-07 08:00 A | 2001-09-13 16:00 | 71% | 8.1d | 2001-08-07 08:00 | 2001-09-13 16:00 | 27.88d | 51.12d |  |  | 116.5h | 78.5h |
| 2 | 1.1 | Prepare SRD Draft |  | 68h | 2001-08-07 08:00 A | 2001-09-12 14:00 | 82% | 12h | 2001-08-07 08:00 | 2001-09-12 14:00 | 68h | 52.38d | finish no earlier than 2001-08-16 17:00 | jack_huang | 64h | 52h |
| 3 | 1.2 | Review |  | 24h | 2001-08-15 08:00 A | 2001-09-13 09:00 | 33% | 16h | 2001-08-15 08:00 | 2001-09-13 09:00 | 24h | 51.88d | start no earlier than 2001-08-17 08:00 | Cedric_Lin; Erin_Wang; jack_huang; John_Wang; Robin_Liu | 40h | 20h |
| 4 | 1.3 | Finish SRD Baseline |  | 14h | 2001-08-16 08:00 A | 2001-09-13 16:00 | 57% | 6h | 2001-08-16 08:00 | 2001-09-13 16:00 | 14h | 51.12d | start no earlier than 2001-08-20 08:00 | jack_huang | 8h | 2h |
| 5 | 1.4 | Status Reports |  | 8h | 2001-08-17 08:00 A | 2001-08-17 17:00 A | 100% |  | 2001-08-17 08:00 | 2001-08-17 17:00 | 8h |  | start no earlier than 2001-08-20 08:00 | Erin_Wang [12.5%] | 1h | 1h |
| 6 | 1.5 | Quality Assurance Report |  | 2h | 2001-08-20 08:00 A | 2001-08-20 10:00 A | 100% |  | 2001-08-20 08:00 | 2001-08-20 10:00 | 2h |  | start no earlier than 2001-08-20 08:00 | Cedric_Lin | 2h | 2h |
| 7 | 1.6 | Milestone Meeting |  | 1h | 2001-08-16 08:00 A | 2001-08-16 09:00 A | 100% |  | 2001-08-16 08:00 | 2001-08-16 09:00 | 1h |  | start no earlier than 2001-08-21 08:00 | Cedric_Lin; Erin_Wang [12.5%]; jack_huang [12.5%]; John_Wang [12.5%]; Robin_Liu [12.5%] | 1.5h | 1.5h |
| 8 | 2 | **Software Project Plan** |  | 22.12d | 2001-08-16 08:00 A | 2001-09-17 09:00 | 53% | 10.37d | 2001-08-16 08:00 | 2001-09-17 09:00 | 22.12d | 49.88d |  |  | 97.87h | 29.38h |
| 9 | 2.1 | CMM Process Training(Estimation) |  | 1h | 2001-09-04 08:00 A | 2001-09-04 09:00 A | 100% |  | 2001-09-04 08:00 | 2001-09-04 09:00 | 1h |  | start no earlier than 2001-09-04 08:00 | John_Wang; eric_chen; hz_liu; kurt_xiang; shui_wang; ardy_yan; xz_wu; zg_zheng; Albert_Wang | 9h | 9h |
| 10 | 2.2 | Prepare Estimation Factors |  | 8h | 2001-08-16 08:00 A | 2001-08-16 17:00 A | 100% |  | 2001-08-16 08:00 | 2001-08-16 17:00 | 8h |  | start no earlier than 2001-08-21 08:00 | Erin_Wang [50%] | 4h | 4h |
| 11 | 2.3 | Estimation Factors Meeting |  | 8h | 2001-08-17 08:00 A | 2001-08-17 17:00 A | 100% |  | 2001-08-17 08:00 | 2001-08-17 17:00 | 8h |  | start no earlier than 2001-08-22 08:00 | Erin_Wang [12.5%]; jack_huang [12.5%]; Robin_Liu [12.5%] | 3h | 3h |
| 12 | 2.4 | Personal Estimation |  | 23.71h | 2001-08-17 08:00 A | 2001-09-11 15:51 | 34% | 15.71h | 2001-08-17 08:00 | 2001-09-11 15:51 | 23.71h | 53.14d | start no earlier than 2001-08-22 08:00 | Erin_Wang [87.5%]; jack_huang [87.5%]; Robin_Liu [87.5%] | 21h | 3h |
| 13 | 2.5 | Estimation Summary |  | 8h | 2001-08-20 08:00 A | 2001-08-20 17:00 A | 100% |  | 2001-08-20 08:00 | 2001-08-20 17:00 | 8h |  | start no earlier than 2001-08-23 08:00 | Erin_Wang [25%] | 2h | 2h |
| 14 | 2.6 | Software Development Plan |  | 21.33h | 2001-08-17 08:00 A | 2001-08-30 16:20 | 38% | 13.33h | 2001-08-17 08:00 | 2001-08-30 16:20 | 21.33h | 61.08d | start no earlier than 2001-08-23 08:00 | Erin_Wang [37.5%] | 6h | 2h |
| 15 | 2.7 | Software Quality Assurance plan |  | 30h | 2001-08-30 15:00 A | 2001-09-13 13:51 | 27% | 22h | 2001-08-30 15:00 | 2001-09-13 13:51 | 30h | 51.39d | finish no earlier than 2001-08-23 17:00 | Erin_Wang | 24h | 2h |
| 16 | 2.8 | Software Configuration Management plan |  | 20h | 2001-09-04 08:00 A | 2001-09-14 08:51 | 40% | 12h | 2001-09-04 08:00 | 2001-09-14 08:51 | 20h | 50.89d | start no earlier than 2001-08-23 08:00 | Erin_Wang | 8h | 2h |
| 17 | 2.9 | Repare Review |  | 12.5h | 2001-09-05 08:00 A | 2001-09-17 09:00 | 64% | 4.5h | 2001-09-05 08:00 | 2001-09-17 09:00 | 12.5h | 49.88d | start no earlier than 2001-08-24 08:00 | Erin_Wang; jack_huang; John_Wang; Robin_Liu | 10h | 1h |
| 18 | 2.10 | Review |  | 7.75h | 2001-09-05 08:00 A | 2001-09-14 14:15 | 52% | 3.75h | 2001-09-05 08:00 | 2001-09-14 14:15 | 7.75h | 0d | start no earlier than 2001-08-24 08:00 | Erin_Wang [6.2%]; jack_huang; John_Wang [6.2%]; Robin_Liu | 8h | 0.5h |
| 19 | 2.11 | SDP Baseline |  | 2h | 2001-09-05 08:00 A | 2001-09-05 10:00 A | 100% |  | 2001-09-05 08:00 | 2001-09-05 10:00 | 2h |  | start no earlier than 2001-08-24 08:00 | Erin_Wang [6.2%] | 0.12h | 0.12h |
| 20 | 2.12 | SQA Baseline |  | 2h | 2001-09-05 08:00 A | 2001-09-05 10:00 A | 100% |  | 2001-09-05 08:00 | 2001-09-05 10:00 | 2h |  | start no earlier than 2001-08-24 08:00 | Erin_Wang [6.2%] | 0.12h | 0.12h |
| 21 | 2.13 | SCM Baseline |  | 2h | 2001-09-05 08:00 A | 2001-09-05 10:00 A | 100% |  | 2001-09-05 08:00 | 2001-09-05 10:00 | 2h |  | start no earlier than 2001-08-24 08:00 | Erin_Wang [6.2%] | 0.12h | 0.12h |
| 22 | 2.14 | Status Report |  | 2h | 2001-09-05 08:00 A | 2001-09-05 10:00 A | 100% |  | 2001-09-05 08:00 | 2001-09-05 10:00 | 2h |  | start no earlier than 2001-08-24 08:00 | Erin_Wang [6.2%] | 0.12h | 0.12h |
| 23 | 2.15 | Review Report |  | 2h | 2001-09-05 08:00 A | 2001-09-05 10:00 A | 100% |  | 2001-09-05 08:00 | 2001-09-05 10:00 | 2h |  | start no earlier than 2001-08-24 08:00 | Erin_Wang [6.2%] | 0.12h | 0.12h |
| 24 | 2.16 | Quality Assurance Report |  | 2h | 2001-09-05 08:00 A | 2001-09-05 10:00 A | 100% |  | 2001-09-05 08:00 | 2001-09-05 10:00 | 2h |  | start no earlier than 2001-08-24 08:00 | Erin_Wang [6.2%] | 0.12h | 0.12h |
| 25 | 2.17 | Milestone meeting |  | 2h | 2001-09-05 08:00 A | 2001-09-14 15:15 | 50% | 1h | 2001-09-05 08:00 | 2001-09-14 15:15 | 2h | 0d | start no earlier than 2001-08-27 08:00 | Erin_Wang [6.2%]; jack_huang; John_Wang [6.2%]; Robin_Liu | 2.12h | 0.12h |
| 26 | 2.18 | Software Project Plan Milestone | milestone | 0h | 2001-08-27 08:00 | 2001-08-27 08:00 |  |  | 2001-08-27 08:00 | 2001-08-27 08:00 | 0h | 65d | start no earlier than 2001-08-27 08:00 |  |  |  |

Notes:
- 4: finished during the review meeting

| ID | WBS | Task | Type | Duration | Start | Finish | Complete | Baseline start | Baseline finish | Baseline duration | Constraint | Resources | Work | Actual work |
| --- | --- | --- | --- | --- | --- | --- | --- | --- | --- | --- | --- | --- | --- | --- |
| 27 | 3 | **High Level Design** |  | 25.12d | 2001-08-17 08:00 A | 2001-09-21 09:00 A | 100% | 2001-08-17 08:00 | 2001-09-21 09:00 | 25.12d |  |  | 486.75h | 486.75h |
| 28 | 3.1 | Rational Rose Training |  | 1h | 2001-09-05 08:00 A | 2001-09-05 09:00 A | 100% | 2001-09-05 08:00 | 2001-09-05 09:00 | 1h | start no earlier than 2001-09-05 08:00 | eric_chen; hz_liu; kurt_xiang; shui_wang; ardy_yan; xz_wu; zg_zheng | 7h | 7h |
| 29 | 3.2 | Project Central Training |  | 0.5h | 2001-09-04 08:00 A | 2001-09-04 08:30 A | 100% | 2001-09-04 08:00 | 2001-09-04 08:30 | 0.5h | start no earlier than 2001-09-04 08:00 | eric_chen; hz_liu; kurt_xiang; shui_wang; ardy_yan; xz_wu; zg_zheng | 3.5h | 3.5h |
| 30 | 3.3 | SDK Package Training |  | 0.5h | 2001-09-04 08:00 A | 2001-09-04 08:30 A | 100% | 2001-09-04 08:00 | 2001-09-04 08:30 | 0.5h | start no earlier than 2001-09-04 08:00 | eric_chen; hz_liu; kurt_xiang; shui_wang; ardy_yan; xz_wu; zg_zheng; Robin_Liu | 4h | 4h |
| 31 | 3.4 | Architecture Design |  | 136h | 2001-08-17 08:00 A | 2001-09-06 17:00 A | 100% | 2001-08-17 08:00 | 2001-09-06 17:00 | 136h | start no earlier than 2001-08-21 08:00 | jack_huang [125%]; Robin_Liu | 208h | 208h |
| 32 | 3.5 | UI Design(Text&PIC) |  | 80h | 2001-08-17 08:00 A | 2001-08-30 17:00 A | 100% | 2001-08-17 08:00 | 2001-08-30 17:00 | 80h | finish no earlier than 2001-08-28 17:00 | Erin_Wang | 68h | 68h |
| 33 | 3.6 | Database Design |  | 25h | 2001-08-29 08:00 A | 2001-09-05 09:00 A | 100% | 2001-08-29 08:00 | 2001-09-05 09:00 | 25h | finish no earlier than 2001-09-05 17:00 | Robin_Liu [125%] | 27.25h | 27.25h |
| 34 | 3.7 | Review(UI ) meeting |  | 18h | 2001-08-28 08:00 A | 2001-08-31 17:00 A | 100% | 2001-08-28 08:00 | 2001-08-31 17:00 | 18h | start no earlier than 2001-08-30 08:00 | Erin_Wang [200%]; jack_huang [200%]; John_Wang [200%]; Robin_Liu [200%] | 38h | 38h |
| 35 | 3.8 | Review(UI PIC) prepare internal |  | 1h | 2001-09-04 08:00 A | 2001-09-04 09:30 A | 100% | 2001-09-04 08:00 | 2001-09-04 09:30 | 1h | start no earlier than 2001-09-04 08:00 | Erin_Wang; jack_huang; John_Wang; Robin_Liu | 2h | 2h |
| 36 | 3.9 | Rreview(Database ) prepare |  | 21h | 2001-09-05 08:00 A | 2001-09-17 10:15 A | 100% | 2001-09-05 08:00 | 2001-09-17 10:15 | 21h | start no earlier than 2001-09-05 08:00 | Erin_Wang; jack_huang; John_Wang; Robin_Liu | 20h | 20h |
| 37 | 3.10 | Review(Archi)internal |  | 16h | 2001-09-06 08:00 A | 2001-09-21 09:00 A | 100% | 2001-09-06 08:00 | 2001-09-21 09:00 | 16h | start no earlier than 2001-09-06 08:00 | Erin_Wang; jack_huang; John_Wang; Robin_Liu; eric_chen; hz_liu; kurt_xiang; shui_wang; ardy_yan; xz_wu; zg_zheng | 22h | 22h |
| 38 | 3.11 | Review(Database) meeting with TF |  | 11h | 2001-09-06 08:00 A | 2001-09-14 15:51 A | 100% | 2001-09-06 08:00 | 2001-09-14 15:51 | 11h | start no earlier than 2001-09-06 08:00 | Erin_Wang; John_Wang; Robin_Liu | 6h | 6h |
| 39 | 3.12 | Review(Archi) meeting with TF |  | 9h | 2001-09-07 15:00 A | 2001-09-18 09:21 A | 100% | 2001-09-07 15:00 | 2001-09-18 09:21 | 9h | start no earlier than 2001-09-07 08:00 | Erin_Wang; jack_huang; John_Wang; Robin_Liu | 10h | 10h |
| 40 | 3.13 | Architecture Design document Baseline |  | 8h | 2001-09-07 08:00 A | 2001-09-07 17:00 A | 100% | 2001-09-07 08:00 | 2001-09-07 17:00 | 8h | start no earlier than 2001-09-07 08:00 | jack_huang | 8h | 8h |
| 41 | 3.14 | Database Baseline |  | 8h | 2001-09-06 08:00 A | 2001-09-06 17:00 A | 100% | 2001-09-06 08:00 | 2001-09-06 17:00 | 8h | start no earlier than 2001-09-06 08:00 | Robin_Liu | 8h | 8h |
| 42 | 3.15 | UI Baseline |  | 32h | 2001-09-05 08:00 A | 2001-09-11 17:00 A | 100% | 2001-09-05 08:00 | 2001-09-11 17:00 | 32h | finish no earlier than 2001-09-10 17:00 | Albert_Wang | 24h | 24h |
| 43 | 3.16 | Review report(Database & Architecture&UI text&UI PIC) |  | 14h | 2001-09-07 08:00 A | 2001-09-17 15:51 A | 100% | 2001-09-07 08:00 | 2001-09-17 15:51 | 14h | start no earlier than 2001-08-31 08:00 | Erin_Wang | 14h | 14h |
| 44 | 3.17 | Status Report |  | 9h | 2001-09-07 08:00 A | 2001-09-10 09:00 A | 100% | 2001-09-07 08:00 | 2001-09-10 09:00 | 9h | start no earlier than 2001-09-11 08:00 | Erin_Wang | 2h | 2h |
| 45 | 3.18 | Qality Assurance Report |  | 2h | 2001-09-11 08:00 A | 2001-09-11 10:00 A | 100% | 2001-09-11 08:00 | 2001-09-11 10:00 | 2h | start no earlier than 2001-09-11 08:00 | Erin_Wang | 2h | 2h |
| 46 | 3.19 | Milestone Meeting |  | 2h | 2001-09-11 08:00 A | 2001-09-11 14:30 A | 100% | 2001-09-11 08:00 | 2001-09-11 14:30 | 2h | start no earlier than 2001-09-11 08:00 | Erin_Wang; jack_huang; John_Wang; Robin_Liu | 4h | 4h |
| 47 | 3.20 | Training for Standard |  | 1h | 2001-09-07 08:00 A | 2001-09-07 09:00 A | 100% | 2001-09-07 08:00 | 2001-09-07 09:00 | 1h | start no earlier than 2001-09-07 08:00 | John_Wang; eric_chen; hz_liu; kurt_xiang; shui_wang; ardy_yan; xz_wu; zg_zheng; Albert_Wang | 9h | 9h |
| 48 | 3.21 | Milesetone | milestone | 0h | 2001-09-11 08:00 A | 2001-09-11 08:00 A | 100% | 2001-09-11 08:00 | 2001-09-11 08:00 | 0h | start no earlier than 2001-09-11 08:00 |  |  |  |
| 49 | 4 | **Detail Design** |  | 56d? | 2001-09-04 08:00 A | 2001-11-23 17:00 A | 100% | 2001-09-04 08:00 | 2001-10-09 14:45 | 22.72d? |  |  | 1003.5h | 1003.5h |
| 50 | 4.1 | Study Package |  | 66h? | 2001-09-05 08:00 A | 2001-09-20 17:00 A | 100% | 2001-09-05 08:00 | 2001-09-20 17:00 | 66h? | finish no earlier than 2001-09-07 17:00 | eric_chen; hz_liu; kurt_xiang; shui_wang; ardy_yan; xz_wu; zg_zheng | 210h | 210h |
| 51 | 4.2 | Review JSP Document |  | 9h | 2001-09-10 08:00 A | 2001-09-11 09:00 A | 100% | 2001-09-10 08:00 | 2001-09-11 09:00 | 9h | start no earlier than 2001-09-10 08:00 | John_Wang [12.5%]; Robin_Liu [12.5%]; kurt_xiang; shui_wang; zg_zheng; eric_chen [12.5%] | 9h | 9h |
| 52 | 4.3 | JSP Template |  | 16h? | 2001-09-07 08:00 A | 2001-09-10 17:00 A | 100% | 2001-09-07 08:00 | 2001-09-10 17:00 | 16h? | finish no earlier than 2001-09-10 17:00 | Billy_Zhou | 16h | 16h |
| 53 | 4.4 | JSP Template Meeting |  | 9.5h | 2001-09-10 08:00 A | 2001-09-14 09:30 A | 100% | 2001-09-10 08:00 | 2001-09-14 09:30 | 9.5h | start no earlier than 2001-09-10 08:00 | eric_chen; kurt_xiang; zg_zheng; shui_wang; Robin_Liu | 4h | 4h |
| 54 | 4.5 | Review Report for JSP Document |  | 1h | 2001-09-10 08:00 A | 2001-09-10 09:00 A | 100% | 2001-09-10 08:00 | 2001-09-10 09:00 | 1h | start no earlier than 2001-09-10 08:00 | Erin_Wang | 1h | 1h |
| 55 | 4.6 | Estimaition for Detial Design |  | 13h | 2001-09-10 08:00 A | 2001-09-18 10:21 A | 100% | 2001-09-10 08:00 | 2001-09-18 10:21 | 13h | start no earlier than 2001-09-10 08:00 | Erin_Wang; jack_huang; John_Wang; Robin_Liu; eric_chen | 10h | 10h |
| 56 | 4.7 | Summary the Estimaiton and replan |  | 2h | 2001-09-10 08:00 A | 2001-09-10 10:00 A | 100% | 2001-09-10 08:00 | 2001-09-10 10:00 | 2h | start no earlier than 2001-09-10 08:00 | Erin_Wang | 2h | 2h |
| 57 | 4.8 | Review SDP |  | 17.5h | 2001-09-10 09:00 A | 2001-09-21 17:00 A | 100% | 2001-09-10 09:00 | 2001-09-21 17:00 | 17.5h | start no earlier than 2001-09-10 08:00 | Erin_Wang; jack_huang; John_Wang; Robin_Liu; eric_chen; hz_liu; kurt_xiang; shui_wang; ardy_yan; xz_wu; zg_zheng; Albert_Wang | 24h | 24h |
| 58 | 4.9 | Review report for SDP |  | 0.5h | 2001-09-18 13:21 A | 2001-09-18 13:51 A | 100% | 2001-09-18 13:21 | 2001-09-18 13:51 | 0.5h | start no earlier than 2001-09-10 08:00 | Erin_Wang | 0.5h | 0.5h |
| 59 | 4.10 | RMI Training |  | 3h | 2001-09-11 08:00 A | 2001-09-18 09:45 A | 100% | 2001-09-11 08:00 | 2001-09-18 09:45 | 3h | start no earlier than 2001-09-11 08:00 | jack_huang; hz_liu; ardy_yan | 3h | 3h |

| ID | WBS | Task | Duration | Start | Finish | Predecessors | Complete | Baseline start | Baseline finish | Baseline duration | Constraint | Resources | Work | Actual work |
| --- | --- | --- | --- | --- | --- | --- | --- | --- | --- | --- | --- | --- | --- | --- |
| 60 | 4.11 | **Detial design** | 56d | 2001-09-04 08:00 A | 2001-11-23 17:00 A |  | 100% | 2001-09-04 08:00 | 2001-10-09 14:00 | 22.62d |  |  | 508h | 508h |
| 61 | 4.11.1 | **Tag+JavaBean+EJB design** | 17d | 2001-09-04 08:00 A | 2001-09-26 17:00 A |  | 100% | 2001-09-04 08:00 | 2001-09-26 17:00 | 17d |  |  | 319h | 319h |
| 62 | 4.11.1.1 | "Project" design | 2.62d | 2001-09-11 13:00 A | 2001-09-17 09:00 A |  | 100% | 2001-09-11 13:00 | 2001-09-17 09:00 | 2.62d | start no earlier than 2001-09-10 08:00 | kurt_xiang [175%] | 24h | 24h |
| 63 | 4.11.1.2 | "Content" design | 3d | 2001-09-18 08:00 A | 2001-09-20 17:00 A | 62 | 100% | 2001-09-18 08:00 | 2001-09-20 17:00 | 3d | start no earlier than 2001-09-18 08:00 | kurt_xiang | 24h | 24h |
| 64 | 4.11.1.3 | "ProjectContent" design | 4d | 2001-09-21 08:00 A | 2001-09-26 17:00 A | 63 | 100% | 2001-09-21 08:00 | 2001-09-26 17:00 | 4d | start no earlier than 2001-09-20 08:00 | kurt_xiang | 32h | 32h |
| 65 | 4.11.1.4 | "Subject" design | 1d | 2001-09-11 13:30 A | 2001-09-12 13:30 A |  | 100% | 2001-09-11 13:30 | 2001-09-12 13:30 | 1d | start no earlier than 2001-09-10 08:00 | zg_zheng | 8h | 8h |
| 66 | 4.11.1.5 | "Class" design | 1d | 2001-09-12 13:30 A | 2001-09-13 13:30 A | 65 | 100% | 2001-09-12 13:30 | 2001-09-13 13:30 | 1d |  | zg_zheng | 8h | 8h |
| 67 | 4.11.1.6 | "Users" design | 2d | 2001-09-13 13:30 A | 2001-09-17 13:30 A | 66 | 100% | 2001-09-13 13:30 | 2001-09-17 13:30 | 2d |  | zg_zheng | 16h | 16h |
| 68 | 4.11.1.7 | "Course" design | 3d | 2001-09-17 13:30 A | 2001-09-20 13:30 A | 67 | 100% | 2001-09-17 13:30 | 2001-09-20 13:30 | 3d |  | zg_zheng | 24h | 24h |
| 69 | 4.11.1.8 | "CourseStudent" design | 3d | 2001-09-20 13:30 A | 2001-09-26 13:30 A | 68 | 100% | 2001-09-20 13:30 | 2001-09-26 13:30 | 3d |  | zg_zheng | 24h | 24h |
| 70 | 4.11.1.9 | "SchoolResource" design | 1d | 2001-09-11 13:30 A | 2001-09-12 13:30 A |  | 100% | 2001-09-11 13:30 | 2001-09-12 13:30 | 1d | start no earlier than 2001-09-10 08:00 | shui_wang | 8h | 8h |
| 71 | 4.11.1.10 | "AnswerItem" design | 2d | 2001-09-12 13:30 A | 2001-09-14 13:30 A | 70 | 100% | 2001-09-12 13:30 | 2001-09-14 13:30 | 2d |  | shui_wang | 16h | 16h |
| 72 | 4.11.1.11 | "TestResultsItem" design | 3d | 2001-09-14 13:30 A | 2001-09-19 13:30 A | 71 | 100% | 2001-09-14 13:30 | 2001-09-19 13:30 | 3d |  | shui_wang | 24h | 24h |
| 73 | 4.11.1.12 | "ScoreStatistics" design | 2d | 2001-09-19 13:30 A | 2001-09-21 13:30 A | 72 | 100% | 2001-09-19 13:30 | 2001-09-21 13:30 | 2d |  | shui_wang | 16h | 16h |
| 74 | 4.11.1.13 | "ExaminationScore" design | 2d | 2001-09-21 13:30 A | 2001-09-26 13:30 A | 73 | 100% | 2001-09-21 13:30 | 2001-09-26 13:30 | 2d |  | shui_wang | 16h | 16h |
| 75 | 4.11.1.14 | "HTML" design | 4.75d | 2001-09-04 08:00 A | 2001-09-13 17:00 A |  | 100% | 2001-09-04 08:00 | 2001-09-13 17:00 | 4.75d | finish no earlier than 2001-09-13 17:00 | eric_chen [200%] | 46h | 46h |
| 76 | 4.11.1.15 | "Homework" design | 1d | 2001-09-10 08:00 A | 2001-09-10 17:00 A | 75 | 100% | 2001-09-10 08:00 | 2001-09-10 17:00 | 1d |  | eric_chen [112.5%] | 9h | 9h |
| 77 | 4.11.1.16 | "HomeworkContent" design | 3d | 2001-09-11 08:00 A | 2001-09-17 14:30 A | 76 | 100% | 2001-09-11 08:00 | 2001-09-17 14:30 | 3d |  | eric_chen | 24h | 24h |
| 78 | 4.11.2 | **Application design** | 51.88d | 2001-09-10 09:00 A | 2001-11-23 17:00 A |  | 100% | 2001-09-10 09:00 | 2001-10-09 14:00 | 18.5d |  |  | 189h | 189h |
| 79 | 4.11.2.1 | **"Respective" design** | 51.88d | 2001-09-10 09:00 A | 2001-11-23 17:00 A |  | 100% | 2001-09-10 09:00 | 2001-09-20 14:00 | 8.5d |  |  | 85h | 85h |
| 80 | 4.11.2.1.1 | "System" design | 2.62d | 2001-09-17 08:00 A | 2001-09-20 14:00 A |  | 100% | 2001-09-17 08:00 | 2001-09-20 14:00 | 2.62d | start no earlier than 2001-09-10 08:00 | hz_liu | 16h | 16h |
| 81 | 4.11.2.1.2 | "Examination" design | 4d | 2001-09-12 08:00 A | 2001-09-17 17:00 A | 80 | 100% | 2001-09-12 08:00 | 2001-09-17 17:00 | 4d |  | hz_liu | 29h | 29h |
| 82 | 4.11.2.1.3 | "SortGroup" design | 2d | 2001-09-10 09:00 A | 2001-09-12 09:00 A |  | 100% | 2001-09-10 09:00 | 2001-09-12 09:00 | 2d | start no earlier than 2001-09-10 08:00 | ardy_yan | 16h | 16h |
| 83 | 4.11.2.1.4 | "Listening" design | 3d | 2001-11-21 08:00 A | 2001-11-23 17:00 A | 82 | 100% | 2001-11-20 13:00 | 2001-11-23 12:00 | 3d |  | ardy_yan | 24h | 24h |

| ID | WBS | Task | Type | Duration | Start | Finish | Predecessors | Complete | Remaining | Baseline start | Baseline finish | Baseline duration | Total slack | Constraint | Resources | Work | Actual work |
| --- | --- | --- | --- | --- | --- | --- | --- | --- | --- | --- | --- | --- | --- | --- | --- | --- | --- |
| 84 | 4.11.2.2 | **"Collaborate" design** |  | 10d | 2001-09-20 14:00 A | 2001-10-09 14:00 A | 79 | 100% |  | 2001-09-20 14:00 | 2001-10-09 14:00 | 10d |  |  |  | 104h | 104h |
| 85 | 4.11.2.2.1 | "Interactive voice/chart communication" design |  | 3d | 2001-09-20 14:00 A | 2001-09-26 14:00 A |  | 100% |  | 2001-09-20 14:00 | 2001-09-26 14:00 | 3d |  |  | ardy_yan; hz_liu | 48h | 48h |
| 86 | 4.11.2.2.2 | "Screen/student demo" design |  | 1d | 2001-09-26 14:00 A | 2001-09-27 14:00 A | 85 | 100% |  | 2001-09-26 14:00 | 2001-09-27 14:00 | 1d |  | start no earlier than 2001-09-20 08:00 | ardy_yan; hz_liu | 16h | 16h |
| 87 | 4.11.2.2.3 | "Calling, made/cancle blank Screen" design |  | 1d | 2001-09-28 13:00 A | 2001-09-30 14:00 A | 86 | 100% |  | 2001-09-28 13:00 | 2001-09-30 14:00 | 1.62d |  | start no earlier than 2001-09-21 08:00 | ardy_yan; hz_liu | 8h | 8h |
| 88 | 4.11.2.2.4 | "Quick-answer, class cinema" design |  | 2d | 2001-09-30 14:00 A | 2001-10-09 14:00 A | 87 | 100% |  | 2001-09-30 14:00 | 2001-10-09 14:00 | 2d |  | start no earlier than 2001-09-24 08:00 | ardy_yan; hz_liu | 32h | 32h |
| 89 | 4.12 | Detail design(JSP EJB) review |  | 21h | 2001-09-10 08:00 A | 2001-09-24 17:00 A |  | 100% |  | 2001-09-10 08:00 | 2001-09-24 17:00 | 21h |  | start no earlier than 2001-09-24 08:00 | eric_chen; hz_liu; kurt_xiang; shui_wang; ardy_yan; zg_zheng; Erin_Wang; jack_huang; John_Wang; Robin_Liu | 80h | 80h |
| 90 | 4.13 | Detail Design(JSP EJB)Baseline |  | 19.5h | 2001-09-25 08:00 A | 2001-09-27 17:00 A |  | 100% |  | 2001-09-25 08:00 | 2001-09-27 17:00 | 19.5h |  | start no earlier than 2001-09-25 08:00 | eric_chen; kurt_xiang; shui_wang; zg_zheng | 32h | 32h |
| 91 | 4.14 | Detail(Application) Review |  | 20h | 2001-09-27 08:00 A | 2001-09-29 12:00 A |  | 100% |  | 2001-09-27 08:00 | 2001-09-29 12:00 | 16h |  | start no earlier than 2001-09-27 08:00 | ardy_yan; zg_zheng; Robin_Liu; John_Wang; eric_chen; hz_liu; Erin_Wang | 53h | 53h |
| 92 | 4.15 | Detail Design (Application) Baseline |  | 12h | 2001-09-28 08:00 A | 2001-09-29 17:00 A |  | 100% |  | 2001-09-28 08:00 | 2001-09-29 17:00 | 12h |  | start no earlier than 2001-09-28 08:00 | zg_zheng; ardy_yan | 16h | 16h |
| 93 | 4.16 | System Test Plan Review |  | 4h | 2001-09-26 08:00 A | 2001-09-26 12:00 A |  | 100% |  | 2001-09-26 08:00 | 2001-09-26 12:00 | 4h |  | start no earlier than 2001-09-26 08:00 | Erin_Wang; jack_huang; John_Wang; Robin_Liu; eric_chen | 20h | 20h |
| 94 | 4.17 | Stutas reports |  | 1h | 2001-09-28 11:00 A | 2001-09-28 12:00 A |  | 100% |  | 2001-09-28 11:00 | 2001-09-28 12:00 | 1h |  | start no earlier than 2001-09-28 08:00 | Erin_Wang | 1h | 1h |
| 95 | 4.18 | Review reports |  | 1h | 2001-09-28 13:00 A | 2001-09-28 14:00 A |  | 100% |  | 2001-09-28 13:00 | 2001-09-28 14:00 | 1h |  | start no earlier than 2001-09-28 08:00 | Erin_Wang | 1h | 1h |
| 96 | 4.19 | QA Reports |  | 2h | 2001-09-28 08:00 A | 2001-09-28 10:00 A |  | 100% |  | 2001-09-28 08:00 | 2001-09-28 10:00 | 2h |  | start no earlier than 2001-09-28 08:00 | Erin_Wang | 2h | 2h |
| 97 | 4.20 | Integration Plan |  | 8h? | 2001-09-28 08:00 A | 2001-09-28 17:00 A |  | 100% |  | 2001-09-28 08:00 | 2001-09-28 17:00 | 8h? |  | start no earlier than 2001-09-28 08:00 |  |  |  |
| 98 | 4.21 | Milestone Meeting |  | 6h | 2001-09-24 09:15 A | 2001-09-28 17:00 A |  | 100% |  | 2001-09-24 09:15 | 2001-09-28 17:00 | 6h |  | finish no earlier than 2001-09-28 17:00 | Erin_Wang; eric_chen; hz_liu; kurt_xiang; shui_wang; ardy_yan; xz_wu; zg_zheng; jack_huang; John_Wang; Robin_Liu | 11h | 11h |
| 99 | 4.22 | Milestone for Detail Design | milestone | 0h | 2001-09-28 08:00 A | 2001-09-28 08:00 A |  | 100% |  | 2001-09-28 08:00 | 2001-09-28 08:00 | 0h |  | start no earlier than 2001-09-28 08:00 |  |  |  |
| 100 | 5 | **Coding&Unit Test** |  | 27.62d? | 2001-09-28 08:00 A | 2001-11-09 14:00 | 99 | 1% | 27.39d? | 2001-09-28 08:00 | 2001-11-01 12:00 | 21.5d? | 13.38d |  |  | 1146h | 9h |
| 101 | 5.1 | System Test Plan |  | 24h | 2001-10-15 08:00 | 2001-10-17 17:00 |  |  |  | 2005-03-21 08:00 | 2005-04-06 12:00 | 88h? | 30d | start no earlier than 2001-10-14 08:00 | Erin_Wang | 24h |  |
| 102 | 5.2 | Summary The Estimation and replan |  | 1h | 2001-09-28 08:00 A | 2001-09-28 09:00 A |  | 100% |  | 2001-09-28 08:00 | 2001-09-28 09:00 | 1h |  | start no earlier than 2001-09-28 08:00 | Erin_Wang [20%]; eric_chen [20%]; kurt_xiang [20%]; shui_wang [20%]; zg_zheng [20%] | 1h | 1h |
| 103 | 5.3 | **Search** |  | 7d? | 2001-09-29 08:00 | 2001-10-12 17:00 |  |  |  | 2001-09-29 08:00 | 2001-10-12 17:00 | 7d | 33d |  |  | 88h |  |
| 104 | 5.3.1 | Webmail |  | 40h? | 2001-09-29 08:00 A | 2001-10-10 17:00 A |  | 100% |  | 2001-09-29 08:00 | 2001-10-10 17:00 | 40h? |  | finish no earlier than 2001-10-10 17:00 | John_Wang | 40h | 40h |
| 105 | 5.3.2 | ChatRoom |  | 24h? | 2001-09-29 08:00 A | 2001-10-08 17:00 A |  | 100% |  | 2001-09-29 08:00 | 2001-10-08 17:00 | 24h? |  | finish no earlier than 2001-10-08 17:00 | Erin_Wang | 24h | 24h |
| 106 | 5.3.3 | BBS |  | 24h? | 2001-10-10 08:00 A | 2001-10-12 17:00 A |  | 100% |  | 2001-10-10 08:00 | 2001-10-12 17:00 | 24h? |  | finish no earlier than 2001-10-12 17:00 | Erin_Wang | 24h | 24h |
| 107 | 5.4 | **Tech Research** |  | 13.12d? | 2001-09-28 08:00 | 2001-10-22 09:00 |  |  |  | 2001-09-28 08:00 | 2001-09-28 17:00 | 1d | 27.88d |  |  | 104h |  |
| 108 | 5.4.1 | JMF |  | 32h? | 2001-09-28 08:00 A | 2001-10-17 09:00 A |  | 100% |  | 2001-09-28 08:00 | 2001-10-08 17:00 | 32h? |  | finish no earlier than 2001-10-08 17:00 | jack_huang | 32h | 32h |
| 109 | 5.4.2 | ChatRoom |  | 32h? | 2001-10-09 08:00 A | 2001-10-12 17:00 A |  | 100% |  | 2001-10-09 08:00 | 2001-10-12 17:00 | 32h? |  | finish no earlier than 2001-10-12 17:00 | jack_huang | 32h | 32h |
| 110 | 5.4.3 | Install Anywhere |  | 16h? | 2001-10-15 08:00 | 2001-10-16 17:00 |  |  |  | 2001-10-15 08:00 | 2001-10-16 17:00 | 16h? | 31d | finish no earlier than 2001-10-16 17:00 | jack_huang | 16h |  |
| 111 | 5.4.4 | Browser to application |  | 24h? | 2004-06-07 08:00 | 2004-06-09 17:00 |  |  |  | 2001-09-17 08:00 | 2001-09-19 17:00 | 24h? | 27.88d | finish no earlier than 2001-09-19 17:00 | jack_huang | 24h |  |

| ID | WBS | Task | Duration | Start | Finish | Predecessors | Complete | Remaining | Baseline start | Baseline finish | Baseline duration | Total slack | Free slack | Constraint | Resources | Work | Actual work |
| --- | --- | --- | --- | --- | --- | --- | --- | --- | --- | --- | --- | --- | --- | --- | --- | --- | --- |
| 112 | 5.5 | **Coding & Unit Test** | 27.5d? | 2001-09-28 09:00 A | 2001-11-09 14:00 |  | 1% | 27.23d? | 2001-09-28 08:00 | 2001-10-24 17:00 | 16d | 13.38d |  |  |  | 917h | 8h |
| 113 | 5.5.1 | Environment Prepare | 18.5h | 2001-09-28 09:00 A | 2001-09-30 11:30 A |  | 100% |  | 2001-09-28 08:00 | 2001-09-28 17:00 | 8h |  |  | start no earlier than 2001-09-28 08:00 | eric_chen; shui_wang; zg_zheng; kurt_xiang | 32h | 32h |
| 114 | 5.5.2 | Upload&nameMap | 8h | 2001-09-29 09:00 A | 2001-09-30 09:00 A |  | 100% |  | 2001-09-28 08:00 | 2001-09-28 17:00 | 8h |  |  | start no earlier than 2001-09-28 08:00 | eric_chen | 8h | 8h |
| 115 | 5.5.3 | SQL Map | 8h | 2001-09-28 09:00 A | 2001-09-29 09:00 A |  | 100% |  | 2001-09-28 08:00 | 2001-09-28 17:00 | 8h |  |  | start no earlier than 2001-09-28 08:00 | kurt_xiang | 8h | 8h |
| 116 | 5.5.4 | **Coding** | 21.31d | 2001-09-29 09:00 | 2001-11-02 11:30 | 115 |  |  | 2001-09-29 08:00 | 2001-10-17 17:00 | 10d | 13.56d | 0d |  |  | 472h |  |
| 117 | 5.5.4.1 | **kurt_xiang** | 10d | 2001-09-30 09:00 | 2001-10-19 09:00 |  |  |  | 2001-09-29 08:00 | 2001-10-17 17:00 | 10d | 23.88d |  |  |  | 80h |  |
| 118 | 5.5.4.1.1 | "Project" | 16h | 2001-09-29 08:00 A | 2001-09-30 17:00 A |  | 100% |  | 2001-09-29 08:00 | 2001-09-30 17:00 | 16h |  |  | start no earlier than 2001-09-29 08:00 | kurt_xiang | 16h | 16h |
| 119 | 5.5.4.1.2 | "Content" | 24h | 2001-10-09 09:00 A | 2001-10-12 09:00 A | 118 | 100% |  | 2001-10-08 08:00 | 2001-10-10 17:00 | 24h |  |  |  | kurt_xiang | 24h | 24h |
| 120 | 5.5.4.1.3 | "ProjectContent" | 40h | 2001-10-12 09:00 A | 2001-10-19 09:00 A | 119 | 100% |  | 2001-10-11 08:00 | 2001-10-17 17:00 | 40h |  |  | start no earlier than 2001-10-08 08:00 | kurt_xiang | 40h | 40h |
| 121 | 5.5.4.2 | **zg_zheng** | 10d | 2001-09-29 08:00 | 2001-10-17 17:00 |  |  |  |  |  |  | 27d |  |  |  | 80h |  |
| 122 | 5.5.4.2.1 | "Users" | 16h | 2001-09-27 08:00 A | 2001-09-28 17:00 A |  | 100% |  |  |  |  |  |  | start no earlier than 2001-09-27 08:00 | zg_zheng | 16h | 16h |
| 123 | 5.5.4.2.2 | "Class" | 8h | 2001-10-08 08:00 A | 2001-10-08 17:00 A | 122 | 100% |  |  |  |  |  |  |  | zg_zheng | 8h | 8h |
| 124 | 5.5.4.2.3 | Subject | 8h | 2001-10-09 08:00 A | 2001-10-09 17:00 A | 123 | 100% |  |  |  |  |  |  | start no earlier than 2001-10-08 08:00 | zg_zheng | 8h | 8h |
| 125 | 5.5.4.2.4 | "Course" | 8h | 2001-10-10 08:00 A | 2001-10-10 17:00 A | 124 | 100% |  |  |  |  |  |  | start no earlier than 2001-10-09 08:00 | zg_zheng | 8h | 8h |
| 126 | 5.5.4.2.5 | "CourseStudent" | 24h | 2001-10-11 08:00 A | 2001-10-15 17:00 A | 125 | 100% |  |  |  |  |  |  | start no earlier than 2001-10-10 08:00 | zg_zheng | 24h | 24h |
| 127 | 5.5.4.2.6 | ChatRoom | 16h | 2001-10-16 08:00 A | 2001-10-17 17:00 | 126 | 50% | 8h |  |  |  | 27d |  | start no earlier than 2001-10-12 08:00 | zg_zheng | 16h | 8h |
| 128 | 5.5.4.3 | **shui_wang** | 10d | 2001-09-29 08:00 | 2001-10-17 17:00 |  |  |  |  |  |  | 27d |  |  |  | 80h |  |
| 129 | 5.5.4.3.1 | "SchoolResource" | 16h | 2001-09-27 08:00 A | 2001-09-28 17:00 A |  | 100% |  |  |  |  |  |  | start no earlier than 2001-09-27 08:00 | shui_wang | 16h | 16h |
| 130 | 5.5.4.3.2 | "AnswerItem" | 8h | 2001-09-29 08:00 A | 2001-09-29 17:00 A | 129 | 100% |  |  |  |  |  |  | start no earlier than 2001-09-29 08:00 | shui_wang | 8h | 8h |
| 131 | 5.5.4.3.3 | "TestResultsItem" | 8h | 2001-09-30 08:00 A | 2001-09-30 17:00 A | 130 | 100% |  |  |  |  |  |  | start no earlier than 2001-09-30 08:00 | shui_wang | 8h | 8h |
| 132 | 5.5.4.3.4 | "ScoreStatistics" | 16h | 2001-10-08 08:00 A | 2001-10-09 17:00 A | 131 | 100% |  |  |  |  |  |  | start no earlier than 2001-10-08 08:00 | shui_wang | 16h | 16h |
| 133 | 5.5.4.3.5 | "ExaminationScore" | 16h | 2001-10-10 08:00 A | 2001-10-11 17:00 A | 132 | 100% |  |  |  |  |  |  | start no earlier than 2001-10-10 08:00 | shui_wang | 16h | 16h |
| 134 | 5.5.4.3.6 | BBS | 16h | 2001-10-12 08:00 A | 2001-10-15 17:00 | 133 | 50% | 8h |  |  |  | 27d |  | start no earlier than 2001-10-12 08:00 | shui_wang | 16h | 8h |
| 135 | 5.5.4.4 | **Eric** | 9d | 2001-09-30 09:00 | 2001-10-18 09:00 |  |  |  | 2001-09-30 08:00 | 2001-10-17 17:00 | 9d | 24.88d |  |  |  | 72h |  |
| 136 | 5.5.4.4.1 | "Homework" | 16h | 2001-09-30 09:00 A | 2001-10-09 09:00 A |  | 100% |  | 2001-09-30 08:00 | 2001-10-08 17:00 | 16h |  |  | start no earlier than 2001-09-30 08:00 | eric_chen | 16h | 16h |
| 137 | 5.5.4.4.2 | "HomeworkContent" | 32h | 2001-10-09 09:00 A | 2001-10-15 09:00 A | 136 | 100% |  | 2001-10-09 08:00 | 2001-10-12 17:00 | 32h |  |  |  | eric_chen | 32h | 32h |
| 138 | 5.5.4.4.3 | Webmail | 24h | 2001-10-15 09:00 | 2001-10-18 09:00 | 137 |  |  | 2001-10-15 08:00 | 2001-10-17 17:00 | 24h | 24.88d |  | start no earlier than 2001-10-12 08:00 | eric_chen | 24h |  |
| 139 | 5.5.5 | Integrate and serve for Application | 48.5h | 2001-11-02 11:30 A | 2001-11-12 12:00 | 116 | 58% | 20.5h | 2001-10-18 08:00 | 2001-10-24 17:00 | 40h | 13.56d |  | finish no earlier than 2001-11-08 17:00 | eric_chen; kurt_xiang; shui_wang | 109.5h | 84h |

| ID | WBS | Task | Duration | Start | Finish | Predecessors | Complete | Remaining | Baseline start | Baseline finish | Baseline duration | Total slack | Free slack | Constraint | Resources | Work | Actual work |
| --- | --- | --- | --- | --- | --- | --- | --- | --- | --- | --- | --- | --- | --- | --- | --- | --- | --- |
| 140 | 5.5.6 | **Application** | 26.62d? | 2001-09-29 08:00 A | 2001-11-09 14:00 |  | 3% | 25.81d? | 2001-09-29 08:00 | 2001-10-29 17:00 | 18d | 13.38d |  |  |  | 277h | 8h |
| 141 | 5.5.6.1 | **SYSTEM** | 21.5d | 2001-09-29 08:00 A | 2001-11-02 12:00 |  | 20% | 17.3d | 2001-09-29 08:00 | 2001-09-30 17:00 | 2d | 16.5d | 0d |  |  | 41h | 8h |
| 142 | 5.5.6.1.1 | **Part A** | 4.25d | 2001-09-29 08:00 A | 2001-10-10 10:00 |  | 44% | 2.36d | 2001-09-29 08:00 | 2001-09-30 17:00 | 2d | 33.75d |  |  |  | 18h | 8h |
| 143 | 5.5.6.1.1.1 | CourseInfo | 2h | 2001-09-29 08:00 A | 2001-09-29 10:00 A |  | 100% |  | 2001-09-29 08:00 | 2001-09-29 10:00 | 2h |  |  | start no earlier than 2001-09-29 08:00 | hz_liu | 2h | 2h |
| 144 | 5.5.6.1.1.2 | ICourse | 2h | 2001-09-29 08:00 A | 2001-09-29 10:00 A |  | 100% |  | 2001-09-29 08:00 | 2001-09-29 10:00 | 2h |  |  | start no earlier than 2001-09-29 08:00 | hz_liu | 2h | 2h |
| 145 | 5.5.6.1.1.3 | IUser | 2h | 2001-09-29 08:00 A | 2001-09-29 10:00 A |  | 100% |  | 2001-09-29 08:00 | 2001-09-29 10:00 | 2h |  |  | start no earlier than 2001-09-29 08:00 | hz_liu | 2h | 2h |
| 146 | 5.5.6.1.1.4 | SystemExit | 2h | 2001-09-29 08:00 A | 2001-09-29 10:00 A |  | 100% |  | 2001-09-29 08:00 | 2001-09-29 10:00 | 2h |  |  | start no earlier than 2001-09-29 08:00 | hz_liu | 2h | 2h |
| 147 | 5.5.6.1.1.5 | UserInfo | 2h | 2001-10-10 08:00 A | 2001-10-10 10:00 A |  | 100% |  | 2001-09-30 08:00 | 2001-09-30 10:00 | 2h |  |  | start no earlier than 2001-09-30 08:00 | hz_liu | 2h | 2h |
| 148 | 5.5.6.1.1.6 | SystemControl | 8h | 2001-11-09 08:00 A | 2001-11-13 17:00 A |  | 100% |  | 2001-09-30 08:00 | 2001-09-30 17:00 | 8h |  |  | finish no earlier than 2001-09-30 17:00 | hz_liu | 8h | 8h |
| 149 | 5.5.6.1.1.7 | EJBAcess | 24h? | 2001-10-31 08:00 A | 2001-11-02 17:00 |  | 30% | 16.8h? |  |  |  | 0d |  | start no earlier than 2001-10-31 08:00 |  |  |  |
| 150 | 5.5.6.1.2 | **Part B** | 21.25d | 2001-09-29 10:00 | 2001-11-02 12:00 |  |  |  | 2001-09-29 08:00 | 2001-09-30 17:00 | 2d | 16.5d |  |  |  | 23h |  |
| 151 | 5.5.6.1.2.1 | LoginIF | 1h | 2001-11-02 09:00 A | 2001-11-02 10:00 A |  | 100% |  | 2001-09-29 08:00 | 2001-09-29 09:00 | 1h |  |  | start no earlier than 2001-09-29 08:00 | ardy_yan | 1h | 1h |
| 152 | 5.5.6.1.2.2 | UserInfo | 1h | 2001-11-02 10:00 A | 2001-11-02 11:00 A |  | 100% |  | 2001-09-29 08:00 | 2001-09-29 09:00 | 1h |  |  | start no earlier than 2001-09-29 08:00 | ardy_yan | 1h | 1h |
| 153 | 5.5.6.1.2.3 | opDO | 1h | 2001-11-02 11:00 A | 2001-11-02 12:00 A |  | 100% |  | 2001-09-29 08:00 | 2001-09-29 09:00 | 1h |  |  | start no earlier than 2001-09-29 08:00 | ardy_yan | 1h | 1h |
| 154 | 5.5.6.1.2.4 | Student | 4h | 2001-09-29 10:00 A | 2001-10-09 15:00 A |  | 100% |  | 2001-09-29 08:00 | 2001-09-29 10:00 | 2h |  |  | start no earlier than 2001-09-29 08:00 | ardy_yan; hz_liu | 4h | 4h |
| 155 | 5.5.6.1.2.5 | StudentImpl | 4h | 2001-09-29 13:00 A | 2001-10-09 17:00 A |  | 100% |  | 2001-09-29 08:00 | 2001-09-29 10:00 | 2h |  |  | start no earlier than 2001-09-29 08:00 | ardy_yan; hz_liu | 4h | 4h |
| 156 | 5.5.6.1.2.6 | Teacher | 4h | 2001-10-10 10:00 A | 2001-10-10 15:00 A |  | 100% |  | 2001-09-30 08:00 | 2001-09-30 10:00 | 2h |  |  | start no earlier than 2001-09-30 08:00 | ardy_yan; hz_liu | 4h | 4h |
| 157 | 5.5.6.1.2.7 | TeacherImpl | 4h | 2001-10-10 13:00 A | 2001-10-10 17:00 A |  | 100% |  | 2001-09-30 08:00 | 2001-09-30 10:00 | 2h |  |  | start no earlier than 2001-09-30 08:00 | ardy_yan; hz_liu | 4h | 4h |
| 158 | 5.5.6.1.2.8 | Group | 152h | 2001-09-29 08:00 A | 2001-10-30 17:00 |  | 90% | 15.2h | 2001-09-30 08:00 | 2001-09-30 10:00 | 2h | 17.88d |  | finish no earlier than 2001-10-30 17:00 | ardy_yan | 152h | 136.8h |
| 159 | 5.5.6.1.2.9 | GroupIF | 2h | 2001-11-01 09:00 A | 2001-11-01 11:00 |  | 80% | 0.4h | 2001-09-30 08:00 | 2001-09-30 10:00 | 2h | 17.62d |  | start no earlier than 2001-09-30 08:00 | ardy_yan | 2h | 1.6h |
| 160 | 5.5.6.2 | **EXAM** | 5.12d | 2001-11-02 13:00 | 2001-11-09 14:00 | 141 |  |  | 2001-10-08 08:00 | 2001-10-12 17:00 | 7d | 13.38d |  |  |  | 41h |  |
| 161 | 5.5.6.2.1 | **ExamUI** | 2d | 2001-11-02 13:00 | 2001-11-06 12:00 |  |  |  | 2001-10-08 08:00 | 2001-10-09 17:00 | 2d | 16.5d |  |  |  | 16h |  |
| 162 | 5.5.6.2.1.1 | AnswerExamFrm | 56h | 2001-10-09 13:00 A | 2001-10-18 12:00 A |  | 100% |  | 2001-10-08 08:00 | 2001-10-08 12:00 | 4h |  |  | start no earlier than 2001-10-08 08:00 | hz_liu | 56h | 56h |
| 163 | 5.5.6.2.1.2 | ClassCinemaFrm | 4h | 2001-10-17 13:00 A | 2001-10-17 17:00 A | 162 | 100% |  | 2001-10-08 13:00 | 2001-10-08 17:00 | 4h |  |  | start no earlier than 2001-10-08 08:00 | hz_liu | 4h | 4h |
| 164 | 5.5.6.2.1.3 | ExamGroupFrm | 4h | 2001-10-17 13:00 A | 2001-10-17 17:00 A | 163 | 100% |  | 2001-10-09 08:00 | 2001-10-09 12:00 | 4h |  |  | start no earlier than 2001-10-09 08:00 | hz_liu | 4h | 4h |
| 165 | 5.5.6.2.1.4 | SelectExamFrm | 4h | 2001-10-18 08:00 A | 2001-10-18 12:00 A | 164 | 100% |  | 2001-10-09 13:00 | 2001-10-09 17:00 | 4h |  |  | start no earlier than 2001-10-09 08:00 | hz_liu | 4h | 4h |
| 166 | 5.5.6.2.2 | ExamCancel | 3h | 2001-10-17 08:00 A | 2001-10-17 11:00 A |  | 100% |  | 2001-10-10 08:00 | 2001-10-10 11:00 | 3h |  |  | start no earlier than 2001-10-10 08:00 | hz_liu | 3h | 3h |
| 167 | 5.5.6.2.3 | ExamEnd(T) | 24h | 2001-10-17 08:00 A | 2001-10-19 17:00 A |  | 100% |  | 2001-10-10 08:00 | 2001-10-10 11:00 | 3h |  |  | start no earlier than 2001-10-10 08:00 | hz_liu | 24h | 24h |
| 168 | 5.5.6.2.4 | ExamGroup | 3h | 2001-10-18 08:00 A | 2001-10-18 11:00 A |  | 100% |  | 2001-10-10 08:00 | 2001-10-10 11:00 | 3h |  |  | start no earlier than 2001-10-10 08:00 | hz_liu | 3h | 3h |
| 169 | 5.5.6.2.5 | ExamSelect | 24h | 2001-10-15 08:00 A | 2001-10-17 17:00 A |  | 100% |  | 2001-10-11 08:00 | 2001-10-11 11:00 | 3h |  |  | start no earlier than 2001-10-11 08:00 | hz_liu | 24h | 24h |
| 170 | 5.5.6.2.6 | ExamStart(S) | 3h | 2001-10-17 08:00 A | 2001-10-17 11:00 A |  | 100% |  | 2001-10-11 08:00 | 2001-10-11 11:00 | 3h |  |  | start no earlier than 2001-10-11 08:00 | hz_liu | 3h | 3h |
| 171 | 5.5.6.2.7 | ExamStart(T) | 2h | 2001-10-17 08:00 A | 2001-10-17 10:00 A |  | 100% |  | 2001-10-11 08:00 | 2001-10-11 10:00 | 2h |  |  | start no earlier than 2001-10-11 08:00 | hz_liu | 2h | 2h |
| 172 | 5.5.6.2.8 | Examination | 2h | 2001-10-12 08:00 A | 2001-10-12 10:00 A |  | 100% |  | 2001-10-12 08:00 | 2001-10-12 10:00 | 2h |  |  | start no earlier than 2001-10-12 08:00 | hz_liu | 2h | 2h |
| 173 | 5.5.6.2.9 | FileAccese | 2h | 2001-10-12 08:00 A | 2001-10-12 10:00 A |  | 100% |  | 2001-10-12 08:00 | 2001-10-12 10:00 | 2h |  |  | start no earlier than 2001-10-12 08:00 | hz_liu | 2h | 2h |
| 174 | 5.5.6.2.10 | IExam | 2h | 2001-10-12 08:00 A | 2001-10-12 10:00 A |  | 100% |  | 2001-10-12 08:00 | 2001-10-12 10:00 | 2h |  |  | start no earlier than 2001-10-12 08:00 | hz_liu | 2h | 2h |
| 175 | 5.5.6.2.11 | answerExam | 32h | 2001-10-22 08:00 A | 2001-10-25 17:00 A |  | 100% |  | 2001-10-12 08:00 | 2001-10-12 10:00 | 2h |  |  | start no earlier than 2001-10-12 08:00 | hz_liu | 32h | 32h |

| ID | WBS | Task | Duration | Start | Finish | Predecessors | Complete | Remaining | Baseline start | Baseline finish | Baseline duration | Total slack | Free slack | Constraint | Resources | Work | Actual work |
| --- | --- | --- | --- | --- | --- | --- | --- | --- | --- | --- | --- | --- | --- | --- | --- | --- | --- |
| 176 | 5.5.6.3 | **INSPECTION** | 6d? | 2001-10-15 08:00 | 2001-10-22 17:00 |  |  |  | 2001-10-15 08:00 | 2001-10-18 17:00 | 4d | 27d |  |  |  | 48h |  |
| 177 | 5.5.6.3.1 | Inspection | 8h? | 2001-10-08 08:00 A | 2001-10-08 17:00 A |  | 100% |  | 2001-10-15 08:00 | 2001-10-15 17:00 | 8h? |  |  | start no earlier than 2001-10-15 08:00 | hz_liu | 8h | 8h |
| 178 | 5.5.6.3.2 | IInspection | 8h | 2001-10-09 08:00 A | 2001-10-09 17:00 A |  | 100% |  | 2001-10-16 08:00 | 2001-10-16 17:00 | 8h |  |  | start no earlier than 2001-10-16 08:00 | hz_liu | 8h | 8h |
| 179 | 5.5.6.3.3 | CallingDialog | 8h | 2001-10-09 08:00 A | 2001-10-09 17:00 A |  | 100% |  | 2001-10-17 08:00 | 2001-10-17 17:00 | 8h |  |  | start no earlier than 2001-10-17 08:00 | hz_liu | 8h | 8h |
| 180 | 5.5.6.3.4 | ShowWarnDialog | 4h | 2001-10-10 08:00 A | 2001-10-10 12:00 A |  | 100% |  | 2001-10-18 08:00 | 2001-10-18 12:00 | 4h |  |  | start no earlier than 2001-10-18 08:00 | hz_liu | 4h | 4h |
| 181 | 5.5.6.3.5 | WarmDialog | 4h | 2001-10-10 08:00 A | 2001-10-10 12:00 A |  | 100% |  | 2001-10-18 08:00 | 2001-10-18 12:00 | 4h |  |  | start no earlier than 2001-10-18 08:00 | hz_liu | 4h | 4h |
| 182 | 5.5.6.3.6 | **MainUI** | 2d? | 2001-10-19 08:00 | 2001-10-22 17:00 |  |  |  | 2001-10-19 08:00 | 2001-10-22 17:00 | 2d | 27d |  |  |  | 16h |  |
| 183 | 5.5.6.3.6.1 | mainFrame | 40h? | 2001-10-26 08:00 A | 2001-11-01 17:00 A |  | 100% |  | 2001-10-19 08:00 | 2001-10-22 17:00 | 16h? |  |  | finish no earlier than 2001-10-30 17:00 | hz_liu | 40h | 40h |
| 184 | 5.5.6.4 | **COMMUNICATION** | 17.75d? | 2001-10-10 08:00 | 2001-11-02 15:00 |  |  |  | 2001-10-08 08:00 | 2001-10-19 17:00 | 10d | 18.25d |  |  |  | 101h |  |
| 185 | 5.5.6.4.1 | **JMF** | 17.75d? | 2001-10-10 08:00 | 2001-11-02 15:00 |  |  |  | 2001-10-08 08:00 | 2001-10-11 17:00 | 4d | 18.25d |  |  |  | 32h |  |
| 186 | 5.5.6.4.1.1 | JMFstudent | 3h | 2001-11-01 11:00 A | 2001-11-01 15:00 A |  | 100% |  | 2001-10-08 08:00 | 2001-10-08 11:00 | 3h |  |  | start no earlier than 2001-10-08 08:00 | ardy_yan | 3h | 3h |
| 187 | 5.5.6.4.1.2 | JMFstudentIF | 1h | 2001-11-02 13:00 A | 2001-11-02 14:00 A |  | 100% |  | 2001-10-08 08:00 | 2001-10-08 09:00 | 1h |  |  | start no earlier than 2001-10-08 08:00 | ardy_yan | 1h | 1h |
| 188 | 5.5.6.4.1.3 | JMFteacher | 3h | 2001-11-01 15:00 A | 2001-11-02 09:00 A |  | 100% |  | 2001-10-08 08:00 | 2001-10-08 11:00 | 3h |  |  | start no earlier than 2001-10-08 08:00 | ardy_yan | 3h | 3h |
| 189 | 5.5.6.4.1.4 | JMFteacherIF | 1h | 2001-11-02 14:00 A | 2001-11-02 15:00 A |  | 100% |  | 2001-10-08 08:00 | 2001-10-08 09:00 | 1h |  |  | start no earlier than 2001-10-08 08:00 | ardy_yan | 1h | 1h |
| 190 | 5.5.6.4.1.5 | MultimediaSender | 8h? | 2001-10-30 16:00 A | 2001-10-31 16:00 A |  | 100% |  | 2001-10-09 08:00 | 2001-10-09 17:00 | 8h? |  |  | start no earlier than 2001-10-09 08:00 | ardy_yan | 8h | 8h |
| 191 | 5.5.6.4.1.6 | ListenDisplay | 4h | 2001-10-10 08:00 | 2001-10-10 12:00 |  |  |  | 2001-10-10 08:00 | 2001-10-10 12:00 | 4h | 35.5d |  | start no earlier than 2001-10-10 08:00 | ardy_yan | 4h |  |
| 192 | 5.5.6.4.1.7 | ListenServer | 4h | 2001-10-30 11:00 | 2001-10-30 16:00 |  |  |  | 2001-10-10 08:00 | 2001-10-10 12:00 | 4h | 21.12d |  | start no earlier than 2001-10-10 08:00 | ardy_yan | 4h |  |
| 193 | 5.5.6.4.1.8 | Demo | 8h? | 2001-10-11 08:00 | 2001-10-11 17:00 |  |  |  | 2001-10-11 08:00 | 2001-10-11 17:00 | 8h? | 34d |  | start no earlier than 2001-10-11 08:00 | ardy_yan | 8h |  |
| 194 | 5.5.6.4.2 | **GroupUI** | 2d? | 2001-10-12 08:00 | 2001-10-15 17:00 |  |  |  | 2001-10-12 08:00 | 2001-10-12 17:00 | 1d | 31d |  |  |  | 16h |  |
| 195 | 5.5.6.4.2.1 | StudentGroupFrm | 8h? | 2001-10-12 08:00 A | 2001-10-12 17:00 |  | 95% | 0.4h? | 2001-10-12 08:00 | 2001-10-12 17:00 | 8h? | 31d | 0d | start no earlier than 2001-10-12 08:00 | ardy_yan | 8h | 7.6h |
| 196 | 5.5.6.4.2.2 | Talk | 8h? | 2001-10-15 08:00 A | 2001-10-15 17:00 | 195 | 95% | 0.4h? | 2001-10-15 08:00 | 2001-10-15 17:00 | 8h? | 31d | 0d | start no earlier than 2001-10-12 08:00 | ardy_yan | 8h | 7.6h |
| 197 | 5.5.6.4.3 | ChatClient | 8h | 2001-10-16 08:00 A | 2001-10-16 17:00 | 196 | 95% | 0.4h | 2001-10-15 08:00 | 2001-10-15 17:00 | 8h | 31d |  | finish no earlier than 2001-10-15 17:00 | ardy_yan | 8h | 7.6h |
| 198 | 5.5.6.4.4 | ChatServer | 8h | 2001-10-29 11:00 A | 2001-10-30 11:00 |  | 95% | 0.4h | 2001-10-16 08:00 | 2001-10-16 17:00 | 8h | 21.62d |  | start no earlier than 2001-10-16 08:00 | ardy_yan | 8h | 7.6h |
| 199 | 5.5.6.4.5 | GroupTalking | 4h | 2001-10-17 08:00 A | 2001-10-17 12:00 |  | 95% | 0.2h | 2001-10-17 08:00 | 2001-10-17 12:00 | 4h | 30.5d |  | start no earlier than 2001-10-17 08:00 | ardy_yan | 4h | 3.8h |
| 200 | 5.5.6.4.6 | QuestionandAnswer | 4h | 2001-10-17 13:00 A | 2001-10-17 17:00 |  | 95% | 0.2h | 2001-10-17 08:00 | 2001-10-17 12:00 | 4h | 30d |  | start no earlier than 2001-10-17 08:00 | ardy_yan | 4h | 3.8h |
| 201 | 5.5.6.4.7 | TalkwithTeacher | 4h | 2001-10-18 08:00 A | 2001-10-18 12:00 |  | 95% | 0.2h | 2001-10-18 08:00 | 2001-10-18 12:00 | 4h | 29.5d |  | start no earlier than 2001-10-18 08:00 | ardy_yan | 4h | 3.8h |
| 202 | 5.5.6.4.8 | groupDO | 4h | 2001-10-18 13:00 A | 2001-10-18 17:00 |  | 95% | 0.2h | 2001-10-18 08:00 | 2001-10-18 12:00 | 4h | 29d |  | start no earlier than 2001-10-18 08:00 | ardy_yan | 4h | 3.8h |
| 203 | 5.5.6.4.9 | FileAccess | 4h | 2001-10-23 14:00 A | 2001-10-24 11:00 |  | 95% | 0.2h | 2001-10-18 08:00 | 2001-10-18 12:00 | 4h | 25.62d |  | start no earlier than 2001-10-18 08:00 | ardy_yan | 4h | 3.8h |

| ID | WBS | Task | Type | Duration | Start | Finish | Complete | Remaining | Baseline start | Baseline finish | Baseline duration | Total slack | Constraint | Resources | Work | Actual work |
| --- | --- | --- | --- | --- | --- | --- | --- | --- | --- | --- | --- | --- | --- | --- | --- | --- |
| 204 | 5.5.6.4.10 | **QuestionUI** |  | 0.5d | 2001-10-19 13:00 | 2001-10-19 17:00 |  |  | 2001-10-19 08:00 | 2001-10-19 17:00 | 1d | 28d |  |  | 4h |  |
| 205 | 5.5.6.4.10.1 | QuestionStudent |  | 2h | 2001-10-19 13:00 A | 2001-10-19 15:00 | 95% | 0.1h | 2001-10-19 08:00 | 2001-10-19 10:00 | 2h | 28.25d | start no earlier than 2001-10-19 08:00 | ardy_yan | 2h | 1.9h |
| 206 | 5.5.6.4.10.2 | QuestionTeacher |  | 2h | 2001-10-19 15:00 A | 2001-10-19 17:00 | 95% | 0.1h | 2001-10-19 08:00 | 2001-10-19 10:00 | 2h | 28d | start no earlier than 2001-10-19 08:00 | ardy_yan | 2h | 1.9h |
| 207 | 5.5.6.4.11 | CommunicationStudent |  | 4h | 2001-10-19 08:00 A | 2001-10-19 12:00 | 95% | 0.2h | 2001-10-19 08:00 | 2001-10-19 12:00 | 4h | 28.5d | start no earlier than 2001-10-19 08:00 | ardy_yan | 4h | 3.8h |
| 208 | 5.5.6.4.12 | CommunicationStudentIF |  | 3h | 2001-10-22 08:00 A | 2001-10-22 11:00 | 95% | 0.15h | 2001-10-22 08:00 | 2001-10-22 11:00 | 3h | 27.62d | start no earlier than 2001-10-22 08:00 | ardy_yan | 3h | 2.85h |
| 209 | 5.5.6.4.13 | CommunicationTeacher |  | 3h | 2001-10-22 11:00 A | 2001-10-22 15:00 | 95% | 0.15h | 2001-10-22 08:00 | 2001-10-22 11:00 | 3h | 27.25d | start no earlier than 2001-10-22 08:00 | ardy_yan | 3h | 2.85h |
| 210 | 5.5.6.4.14 | CommunicationTeacherIF |  | 3h | 2001-10-22 15:00 A | 2001-10-23 09:00 | 95% | 0.15h | 2001-10-22 08:00 | 2001-10-22 11:00 | 3h | 26.88d | start no earlier than 2001-10-22 08:00 | ardy_yan | 3h | 2.85h |
| 211 | 5.5.6.5 | **LISTENING** |  | 4.25d | 2001-10-23 09:00 | 2001-10-29 11:00 |  |  | 2001-10-23 08:00 | 2001-10-24 17:00 | 2d | 22.62d |  |  | 14h |  |
| 212 | 5.5.6.5.1 | **ListeningUI** |  | 0.5d | 2001-10-23 09:00 | 2001-10-23 14:00 |  |  | 2001-10-22 08:00 | 2001-10-22 17:00 | 1d | 26.38d |  |  | 4h |  |
| 213 | 5.5.6.5.1.1 | PlayListenFrm |  | 2h | 2001-11-09 08:00 | 2001-11-09 10:00 |  |  | 2001-10-22 08:00 | 2001-10-22 10:00 | 2h | 26.62d | start no earlier than 2001-11-09 08:00 | ardy_yan | 2h |  |
| 214 | 5.5.6.5.1.2 | SelectLinstenFrm |  | 2h | 2001-11-09 08:00 | 2001-11-09 10:00 |  |  | 2001-10-22 08:00 | 2001-10-22 10:00 | 2h | 26.38d | start no earlier than 2001-11-09 08:00 | ardy_yan | 2h |  |
| 215 | 5.5.6.5.2 | Listeningstudent |  | 2h | 2001-11-09 08:00 | 2001-11-09 10:00 |  |  | 2001-10-24 08:00 | 2001-10-24 10:00 | 2h | 25.75d | start no earlier than 2001-11-09 08:00 | ardy_yan | 2h |  |
| 216 | 5.5.6.5.3 | ListeningstudentIF |  | 2h | 2001-11-09 08:00 | 2001-11-09 10:00 |  |  | 2001-10-24 08:00 | 2001-10-24 10:00 | 2h | 25.38d | start no earlier than 2001-11-09 08:00 | ardy_yan | 2h |  |
| 217 | 5.5.6.5.4 | Listeningteacher |  | 2h | 2001-11-09 08:00 | 2001-11-09 10:00 |  |  | 2001-10-24 08:00 | 2001-10-24 10:00 | 2h | 25.12d | start no earlier than 2001-11-09 08:00 | ardy_yan | 2h |  |
| 218 | 5.5.6.5.5 | ListeningteacherIF |  | 2h | 2001-11-09 08:00 | 2001-11-13 10:00 |  |  | 2001-10-24 08:00 | 2001-10-24 10:00 | 2h | 22.88d | start no earlier than 2001-11-09 08:00 | ardy_yan | 2h |  |
| 219 | 5.5.6.5.6 | listeningDO |  | 2h | 2001-11-09 08:00 | 2001-11-09 10:00 |  |  | 2001-10-24 08:00 | 2001-10-24 10:00 | 2h | 22.62d | start no earlier than 2001-11-09 08:00 | ardy_yan | 2h |  |
| 220 | 5.5.6.6 | Integration of Application |  | 40h? | 2001-11-12 08:00 | 2001-11-16 17:00 |  |  | 2001-10-25 08:00 | 2001-10-26 17:00 | 16h? | 23d | finish no earlier than 2001-11-16 17:00 | ardy_yan; hz_liu | 80h |  |
| 221 | 5.6 | Coding Review(Javabean) |  | 8h? | 2001-10-25 08:00 | 2001-10-25 17:00 |  |  | 2001-10-25 08:00 | 2001-10-25 17:00 | 8h? | 24d | finish no earlier than 2001-10-25 17:00 |  |  |  |
| 222 | 5.7 | Coding rework(Javabean) |  | 8h? | 2001-10-26 08:00 | 2001-10-26 17:00 |  |  | 2001-10-26 08:00 | 2001-10-26 17:00 | 8h? | 23d | start no earlier than 2001-10-26 08:00 |  |  |  |
| 223 | 5.8 | Coding Review(Application) |  | 8h? | 2001-11-12 08:00 | 2001-11-12 17:00 |  |  | 2001-10-29 08:00 | 2001-10-29 17:00 | 8h? | 22d | start no earlier than 2001-11-11 08:00 |  |  |  |
| 224 | 5.9 | Coding rework(Application) |  | 8h? | 2001-11-12 08:00 | 2001-11-12 17:00 |  |  | 2001-10-30 08:00 | 2001-10-30 17:00 | 8h? | 21d | start no earlier than 2001-11-12 08:00 |  |  |  |
| 225 | 5.10 | Stutas reports |  | 2h | 2001-11-18 08:00 | 2001-11-18 10:00 |  |  | 2001-10-29 08:00 | 2001-10-29 10:00 | 2h | 21.5d | start no earlier than 2001-11-18 08:00 | Erin_Wang | 2h |  |
| 226 | 5.11 | Review reports |  | 8h | 2001-11-19 08:00 | 2001-11-19 17:00 |  |  | 2001-10-29 08:00 | 2001-10-29 17:00 | 8h | 22d | start no earlier than 2001-11-19 08:00 | Erin_Wang | 8h |  |
| 227 | 5.12 | QA Reports |  | 2h | 2001-11-19 08:00 | 2001-11-19 10:00 |  |  | 2001-10-30 08:00 | 2001-10-30 10:00 | 2h | 21.75d | start no earlier than 2001-11-19 08:00 | Erin_Wang | 2h |  |
| 228 | 5.13 | Milestone Meeting |  | 2h | 2001-11-19 08:00 | 2001-11-19 10:00 |  |  | 2001-10-30 08:00 | 2001-10-30 10:00 | 2h | 21.75d | start no earlier than 2001-11-19 08:00 |  |  |  |
| 229 | 5.14 | Milestone | milestone | 0h | 2001-10-30 08:00 | 2001-10-30 08:00 |  |  | 2001-10-30 08:00 | 2001-10-30 08:00 | 0h | 22d | start no earlier than 2001-10-30 08:00 |  |  |  |

| ID | WBS | Task | Duration | Start | Finish | Predecessors | Baseline start | Baseline finish | Baseline duration | Total slack | Constraint |
| --- | --- | --- | --- | --- | --- | --- | --- | --- | --- | --- | --- |
| 230 | 6 | **Syste Test** | 21d? | 2001-10-31 08:00 | 2001-11-28 17:00 |  | 2001-10-31 08:00 | 2001-11-28 17:00 | 21d | 0d |  |
| 231 | 6.1 | **JSP System Test – WorkStation(with hard disc) Phase Starts** | 11d | 2001-11-12 08:00 | 2001-11-22 17:00 |  | 2001-10-31 08:00 | 2001-11-28 17:00 | 168h? | 0d |  |
| 232 | 6.1.1 | Admin 1 | 8h? | 2001-11-13 08:00 | 2001-11-13 17:00 |  |  |  |  | 0d | start no earlier than 2001-11-13 08:00 |
| 233 | 6.1.2 | Teacher 1 | 8h? | 2001-11-14 08:00 | 2001-11-14 17:00 | 232 |  |  |  | 0d | start no earlier than 2001-11-14 08:00 |
| 234 | 6.1.3 | Student 1 | 8h? | 2001-11-15 08:00 | 2001-11-15 17:00 | 233 |  |  |  | 0d | start no earlier than 2001-11-15 08:00 |
| 235 | 6.1.4 | Bug Fix 1 | 24h? | 2001-11-14 08:00 | 2001-11-16 17:00 |  |  |  |  | 0d | finish no earlier than 2001-11-16 17:00 |
| 236 | 6.1.5 | Admin 2 | 8h? | 2001-11-17 08:00 | 2001-11-17 17:00 | 235 |  |  |  | 0d | start no earlier than 2001-11-17 08:00 |
| 237 | 6.1.6 | Teacher 2 | 8h | 2001-11-19 08:00 | 2001-11-19 17:00 | 236 |  |  |  | 0d | start no earlier than 2001-11-19 08:00 |
| 238 | 6.1.7 | Student 2 | 8h | 2001-11-20 08:00 | 2001-11-20 17:00 | 237 |  |  |  | 0d | start no earlier than 2001-11-20 08:00 |
| 239 | 6.1.8 | Bug Fix 2 | 16h? | 2001-11-20 08:00 | 2001-11-21 17:00 |  |  |  |  | 0d | finish no earlier than 2001-11-21 17:00 |
| 240 | 6.1.9 | All Jsp Test | 8h? | 2001-11-22 08:00 | 2001-11-22 17:00 | 239 |  |  |  | 0d | start no earlier than 2001-11-22 08:00 |
| 241 | 6.2 | JSP System Test - WorkStation(without hard disc) Phase Starts | 48h? | 2001-11-23 08:00 | 2001-11-30 17:00 |  | 2001-10-31 08:00 | 2001-11-28 17:00 | 168h? | 0d | start no earlier than 2001-11-23 08:00 |
| 242 | 6.3 | Application System Test – WorkStation(with hard disc) Phase Starts | 80h? | 2001-11-19 08:00 | 2001-11-30 17:00 |  |  |  |  | 0d | finish no earlier than 2001-11-30 17:00 |
| 243 | 6.4 | Application System Test - WorkStation(without hard disc) Phase Starts | 80h? | 2001-12-03 08:00 | 2001-12-14 17:00 |  |  |  |  | 0d | start no earlier than 2001-12-03 08:00 |
