# school

Schedule from MS Project, 2001-08-07 to 2001-11-27.
AngelEngineers

## Calendars

- Standard: Mon-Fri 08:00-12:00, 13:00-17:00; Sat-Sun off.

## Resources

| Resource | Group |
| --- | --- |
| Erin_Wang | Programming & Integration |
| jack_huang |  |
| Robin_Liu | Programming |
| John_Wang | Project Management & Architecture |

## Schedule

| ID | WBS | Task | Type | Duration | Start | Finish | Baseline start | Baseline finish | Baseline duration | Total slack | Constraint | Resources | Work |
| --- | --- | --- | --- | --- | --- | --- | --- | --- | --- | --- | --- | --- | --- |
| 1 | 1 | **Requirments Prepare** |  | 11d | 2001-08-07 08:00 | 2001-08-21 17:00 | 2001-08-07 08:00 | 2001-08-21 17:00 | 11d | 0d |  |  |  |
| 2 | 1.1 | Prepare SRD Draft |  | 40h | 2001-08-07 08:00 | 2001-08-13 17:00 | 2001-08-07 08:00 | 2001-08-13 17:00 | 40h | 0d | start no earlier than 2001-08-07 08:00 | jack_huang | 40h |
| 3 | 1.2 | Discuss SRD and Rework |  | 8h | 2001-08-14 08:00 | 2001-08-14 17:00 | 2001-08-14 08:00 | 2001-08-14 17:00 | 8h | 0d | start no earlier than 2001-08-14 08:00 | jack_huang; Erin_Wang; Robin_Liu; John_Wang | 32h |
| 4 | 1.3 | Meeting with TF |  | 4h | 2001-08-16 08:00 | 2001-08-16 12:00 | 2001-08-16 08:00 | 2001-08-16 12:00 | 4h | 0d | start no earlier than 2001-08-16 08:00 |  |  |
| 5 | 1.4 | Rework |  | 8h | 2001-08-16 08:00 | 2001-08-16 17:00 | 2001-08-16 08:00 | 2001-08-16 17:00 | 8h | 0d | start no earlier than 2001-08-16 08:00 |  |  |
| 6 | 1.5 | Review |  | 4h | 2001-08-17 08:00 | 2001-08-17 12:00 | 2001-08-17 08:00 | 2001-08-17 12:00 | 4h | 0d | start no earlier than 2001-08-17 08:00 |  |  |
| 7 | 1.6 | Finish SRD Baseline |  | 8h | 2001-08-20 08:00 | 2001-08-20 17:00 | 2001-08-20 08:00 | 2001-08-20 17:00 | 8h | 0d | start no earlier than 2001-08-20 08:00 |  |  |
| 8 | 1.7 | Status Reports |  | 2h | 2001-08-20 08:00 | 2001-08-20 10:00 | 2001-08-20 08:00 | 2001-08-20 10:00 | 2h | 0d | start no earlier than 2001-08-20 08:00 |  |  |
| 9 | 1.8 | Quality Assurance Report |  | 2h | 2001-08-20 08:00 | 2001-08-20 10:00 | 2001-08-20 08:00 | 2001-08-20 10:00 | 2h | 0d | start no earlier than 2001-08-20 08:00 |  |  |
| 10 | 1.9 | Milestone Meeting |  | 2h | 2001-08-21 08:00 | 2001-08-21 10:00 | 2001-08-21 08:00 | 2001-08-21 10:00 | 2h | 0d | start no earlier than 2001-08-21 08:00 |  |  |
| 12 | 2 | **Software Project Plan** |  | 5d | 2001-08-21 08:00 | 2001-08-27 17:00 | 2001-08-21 08:00 | 2001-08-27 17:00 | 5d | 0d |  |  |  |
| 13 | 2.1 | CMM Process Training(Estimation) |  | 2h | 2001-08-21 08:00 | 2001-08-21 10:00 | 2001-08-21 08:00 | 2001-08-21 10:00 | 2h | 0d | start no earlier than 2001-08-21 08:00 |  |  |
| 14 | 2.2 | Prepare Estimation Factors |  | 4h | 2001-08-21 08:00 | 2001-08-21 12:00 | 2001-08-21 08:00 | 2001-08-21 12:00 | 4h | 0d | start no earlier than 2001-08-21 08:00 |  |  |
| 15 | 2.3 | Estimation Factors Meeting |  | 1h | 2001-08-22 08:00 | 2001-08-22 09:00 | 2001-08-22 08:00 | 2001-08-22 09:00 | 1h | 0d | start no earlier than 2001-08-22 08:00 |  |  |
| 16 | 2.4 | Personal Estimation |  | 7h | 2001-08-22 08:00 | 2001-08-22 16:00 | 2001-08-22 08:00 | 2001-08-22 16:00 | 7h | 0d | start no earlier than 2001-08-22 08:00 |  |  |
| 17 | 2.5 | Estimation Summary |  | 2h | 2001-08-23 08:00 | 2001-08-23 10:00 | 2001-08-23 08:00 | 2001-08-23 10:00 | 2h | 0d | start no earlier than 2001-08-23 08:00 |  |  |
| 18 | 2.6 | Software Development Plan |  | 6h | 2001-08-23 08:00 | 2001-08-23 15:00 | 2001-08-23 08:00 | 2001-08-23 15:00 | 6h | 0d | start no earlier than 2001-08-23 08:00 |  |  |
| 19 | 2.7 | Software Quality Assurance plan |  | 24h | 2001-08-21 08:00 | 2001-08-23 17:00 | 2001-08-21 08:00 | 2001-08-23 17:00 | 24h | 0d | finish no earlier than 2001-08-23 17:00 |  |  |
| 20 | 2.8 | Software Configuration Management plan |  | 8h | 2001-08-23 08:00 | 2001-08-23 17:00 | 2001-08-23 08:00 | 2001-08-23 17:00 | 8h | 0d | start no earlier than 2001-08-23 08:00 |  |  |
| 21 | 2.9 | Repare Review |  | 2h | 2001-08-24 08:00 | 2001-08-24 10:00 | 2001-08-24 08:00 | 2001-08-24 10:00 | 2h | 0d | start no earlier than 2001-08-24 08:00 |  |  |
| 22 | 2.10 | Review |  | 3h | 2001-08-24 08:00 | 2001-08-24 11:00 | 2001-08-24 08:00 | 2001-08-24 11:00 | 3h | 0d | start no earlier than 2001-08-24 08:00 |  |  |
| 23 | 2.11 | SDP Baseline |  | 3h | 2001-08-24 08:00 | 2001-08-24 11:00 | 2001-08-24 08:00 | 2001-08-24 11:00 | 3h | 0d | start no earlier than 2001-08-24 08:00 |  |  |
| 24 | 2.12 | SQA Baseline |  | 3h | 2001-08-24 08:00 | 2001-08-24 11:00 | 2001-08-24 08:00 | 2001-08-24 11:00 | 3h | 0d | start no earlier than 2001-08-24 08:00 |  |  |
| 25 | 2.13 | SCM Baseline |  | 3h | 2001-08-24 08:00 | 2001-08-24 11:00 | 2001-08-24 08:00 | 2001-08-24 11:00 | 3h | 0d | start no earlier than 2001-08-24 08:00 |  |  |
| 26 | 2.14 | Status Report |  | 3h | 2001-08-24 08:00 | 2001-08-24 11:00 | 2001-08-24 08:00 | 2001-08-24 11:00 | 3h | 0d | start no earlier than 2001-08-24 08:00 |  |  |
| 27 | 2.15 | Review Report |  | 3h | 2001-08-24 08:00 | 2001-08-24 11:00 | 2001-08-24 08:00 | 2001-08-24 11:00 | 3h | 0d | start no earlier than 2001-08-24 08:00 |  |  |
| 28 | 2.16 | Quality Assurance Report |  | 3h | 2001-08-24 08:00 | 2001-08-24 11:00 | 2001-08-24 08:00 | 2001-08-24 11:00 | 3h | 0d | start no earlier than 2001-08-24 08:00 |  |  |
| 29 | 2.17 | Milestone meeting |  | 2h | 2001-08-27 08:00 | 2001-08-27 10:00 | 2001-08-27 08:00 | 2001-08-27 10:00 | 2h | 0d | start no earlier than 2001-08-27 08:00 |  |  |
| 30 | 2.18 | Software Project Plan Milestone | milestone | 0h | 2001-08-27 08:00 | 2001-08-27 08:00 | 2001-08-27 08:00 | 2001-08-27 08:00 | 0h | 0d | start no earlier than 2001-08-27 08:00 |  |  |

| ID | WBS | Task | Type | Duration | Start | Finish | Baseline start | Baseline finish | Baseline duration | Total slack | Constraint |
| --- | --- | --- | --- | --- | --- | --- | --- | --- | --- | --- | --- |
| 32 | 3 | **High Level Design** |  | 15d | 2001-08-21 08:00 | 2001-09-10 17:00 | 2001-08-21 08:00 | 2001-09-10 17:00 | 15d | 0d |  |
| 33 | 3.1 | research |  | 24h | 2001-08-21 08:00 | 2001-08-23 17:00 | 2001-08-21 08:00 | 2001-08-23 17:00 | 24h | 0d | finish no earlier than 2001-08-23 17:00 |
| 34 | 3.2 | Rational Rose Training |  | 3h | 2001-08-24 08:00 | 2001-08-24 11:00 | 2001-08-24 08:00 | 2001-08-24 11:00 | 3h | 0d | start no earlier than 2001-08-24 08:00 |
| 35 | 3.3 | Architecture Design |  | 48h | 2001-08-24 08:00 | 2001-08-31 17:00 | 2001-08-24 08:00 | 2001-08-31 17:00 | 48h | 0d | finish no earlier than 2001-08-31 17:00 |
| 36 | 3.4 | UI Design(Text) |  | 48h | 2001-08-21 08:00 | 2001-08-28 17:00 | 2001-08-21 08:00 | 2001-08-28 17:00 | 48h | 0d | finish no earlier than 2001-08-28 17:00 |
| 37 | 3.5 | Review(UI ) meeting |  | 6h | 2001-08-29 08:00 | 2001-08-29 15:00 | 2001-08-29 08:00 | 2001-08-29 15:00 | 6h | 0d | start no earlier than 2001-08-29 08:00 |
| 38 | 3.6 | UI Design(PIC) |  | 24h? | 2001-08-30 08:00 | 2001-09-03 17:00 | 2001-08-30 08:00 | 2001-09-03 17:00 | 24h? | 0d | finish no earlier than 2001-09-03 17:00 |
| 39 | 3.7 | Database Design |  | 48h | 2001-08-24 08:00 | 2001-08-31 17:00 | 2001-08-24 08:00 | 2001-08-31 17:00 | 48h | 0d | start no earlier than 2001-08-24 08:00 |
| 40 | 3.8 | Review(Archi) prepare |  | 2h | 2001-09-03 08:00 | 2001-09-03 10:00 | 2001-09-03 08:00 | 2001-09-03 10:00 | 2h | 0d | start no earlier than 2001-09-03 08:00 |
| 41 | 3.9 | Review(Archi) meeting |  | 6h | 2001-09-03 08:00 | 2001-09-03 15:00 | 2001-09-03 08:00 | 2001-09-03 15:00 | 6h | 0d | start no earlier than 2001-09-03 08:00 |
| 42 | 3.10 | Rreview(Database & UI PIC) prepare |  | 2h | 2001-09-04 08:00 | 2001-09-04 10:00 | 2001-09-04 08:00 | 2001-09-04 10:00 | 2h | 0d | start no earlier than 2001-09-04 08:00 |
| 43 | 3.11 | Review(Database & UI PIC) meeting |  | 6h | 2001-09-04 08:00 | 2001-09-04 15:00 | 2001-09-04 08:00 | 2001-09-04 15:00 | 6h | 0d | start no earlier than 2001-09-04 08:00 |
| 44 | 3.12 | Architecture Design document Baseline |  | 8h | 2001-09-05 08:00 | 2001-09-05 17:00 | 2001-09-05 08:00 | 2001-09-05 17:00 | 8h | 0d | start no earlier than 2001-09-05 08:00 |
| 45 | 3.13 | Database Baseline |  | 8h | 2001-09-05 08:00 | 2001-09-05 17:00 | 2001-09-05 08:00 | 2001-09-05 17:00 | 8h | 0d | start no earlier than 2001-09-05 08:00 |
| 46 | 3.14 | UI(Text) Baseline |  | 8h | 2001-09-04 08:00 | 2001-09-04 17:00 | 2001-09-04 08:00 | 2001-09-04 17:00 | 8h | 0d | start no earlier than 2001-09-04 08:00 |
| 47 | 3.15 | UI(PIC) Baseline |  | 8h? | 2001-09-06 08:00 | 2001-09-06 17:00 | 2001-09-06 08:00 | 2001-09-06 17:00 | 8h? | 0d | start no earlier than 2001-09-06 08:00 |
| 48 | 3.16 | Review report(Database & Architecture&UI text&UI PIC) |  | 8h | 2001-09-07 08:00 | 2001-09-07 17:00 | 2001-09-07 08:00 | 2001-09-07 17:00 | 8h | 0d | start no earlier than 2001-09-07 08:00 |
| 49 | 3.17 | Status Report |  | 2h | 2001-09-07 08:00 | 2001-09-07 10:00 | 2001-09-07 08:00 | 2001-09-07 10:00 | 2h | 0d | start no earlier than 2001-09-07 08:00 |
| 50 | 3.18 | Qality Assurance Report |  | 2h | 2001-09-10 08:00 | 2001-09-10 10:00 | 2001-09-10 08:00 | 2001-09-10 10:00 | 2h | 0d | start no earlier than 2001-09-10 08:00 |
| 51 | 3.19 | Milestone Meeting |  | 2h | 2001-09-10 08:00 | 2001-09-10 10:00 | 2001-09-10 08:00 | 2001-09-10 10:00 | 2h | 0d | start no earlier than 2001-09-10 08:00 |
| 52 | 3.20 | Milesetone | milestone | 0h | 2001-09-10 08:00 | 2001-09-10 08:00 | 2001-09-10 08:00 | 2001-09-10 08:00 | 0h | 0d | start no earlier than 2001-09-10 08:00 |
| 54 | 4 | **Detail Design** |  | 16d | 2001-09-06 08:00 | 2001-09-27 17:00 | 2001-09-06 08:00 | 2001-09-27 17:00 | 16d | 0d |  |
| 55 | 4.1 | Detail Design |  | 112h | 2001-09-06 08:00 | 2001-09-25 17:00 | 2001-09-06 08:00 | 2001-09-25 17:00 | 112h | 0d | finish no earlier than 2001-09-24 17:00 |
| 56 | 4.2 | System Test Plan |  | 40h | 2001-09-12 08:00 | 2001-09-18 17:00 | 2001-09-12 08:00 | 2001-09-18 17:00 | 40h | 0d | finish no earlier than 2001-09-17 17:00 |
| 57 | 4.3 | detail design(System Test Plan) document review |  | 8h | 2001-09-25 08:00 | 2001-09-25 17:00 | 2001-09-25 08:00 | 2001-09-25 17:00 | 8h | 0d | start no earlier than 2001-09-25 08:00 |
| 58 | 4.4 | Detail Desing Baseline |  | 8h | 2001-09-26 08:00 | 2001-09-26 17:00 | 2001-09-26 08:00 | 2001-09-26 17:00 | 8h | 0d | start no earlier than 2001-09-26 08:00 |
| 59 | 4.5 | Stutas reports |  | 2h | 2001-09-27 08:00 | 2001-09-27 10:00 | 2001-09-27 08:00 | 2001-09-27 10:00 | 2h | 0d | start no earlier than 2001-09-27 08:00 |
| 60 | 4.6 | Review reports |  | 3h | 2001-09-27 08:00 | 2001-09-27 11:00 | 2001-09-27 08:00 | 2001-09-27 11:00 | 3h | 0d | start no earlier than 2001-09-27 08:00 |
| 61 | 4.7 | QA Reports |  | 2h | 2001-09-27 08:00 | 2001-09-27 10:00 | 2001-09-27 08:00 | 2001-09-27 10:00 | 2h | 0d | start no earlier than 2001-09-27 08:00 |
| 62 | 4.8 | Miestone Meeting |  | 2h | 2001-09-27 08:00 | 2001-09-27 10:00 | 2001-09-27 08:00 | 2001-09-27 10:00 | 2h | 0d | start no earlier than 2001-09-27 08:00 |
| 63 | 4.9 | Milestone | milestone | 0h | 2001-09-27 08:00 | 2001-09-27 08:00 | 2001-09-27 08:00 | 2001-09-27 08:00 | 0h | 0d | start no earlier than 2001-09-27 08:00 |
| 65 | 5 | Coding&Unit Test |  | 176h? | 2001-09-27 08:00 | 2001-10-26 17:00 | 2001-09-27 08:00 | 2001-10-26 17:00 | 176h? | 0d | finish no earlier than 2001-10-26 17:00 |
| 67 | 6 | System Test |  | 176h? | 2001-10-29 08:00 | 2001-11-27 17:00 | 2001-10-29 08:00 | 2001-11-27 17:00 | 176h? | 0d | finish no earlier than 2001-11-27 17:00 |
